# DMAIC Project Plan Template_98

Schedule from MS Project, 2001-08-20 to 2001-09-18.
Six Sigma - DMAIC Process

## Calendars

- Standard: Mon-Fri 08:00-12:00, 13:00-17:00; Sat-Sun off.

## Resources

| Resource |
| --- |
| Project Sponsor |
| Master Black Belt |
| Black Belt |
| Green Belt |
| Corp. Finance |
| Team Member #1 |
| Team Member #2 |
| All Team Members |
| Stakeholder |
| Trainers |
| Business Unit Finance |

## Schedule

| ID | WBS | Task | Duration | Start | Finish | Predecessors | Total slack | Free slack | Resources | Work |
| --- | --- | --- | --- | --- | --- | --- | --- | --- | --- | --- |
| 1 | 1 | **Plan** | 11.67d? | 2001-08-20 | 2001-09-04 |  | 0d |  |  | 336h |
| 2 | 1.1 | **Project Selection** | 5.67d? | 2001-08-20 | 2001-08-27 |  | 0d |  |  | 112h |
| 3 | 1.1.1 | Identify & Document List of Candidate Projects | 0.67d? | 2001-08-20 | 2001-08-20 |  | 0d |  | Master Black Belt; Black Belt; Project Sponsor | 16h |
| 4 | 1.1.2 | Apply Project Selection Criteria | 1d? | 2001-08-20 | 2001-08-21 | 3 | 0d |  | Project Sponsor; Master Black Belt; Black Belt | 24h |
| 5 | 1.1.3 | Identify & Document Stakeholders Commitment Level(s) Chart | 1d? | 2001-08-21 | 2001-08-22 | 4 | 0d |  | Project Sponsor; Master Black Belt | 16h |
| 6 | 1.1.4 | Prioritize Projects | 1d? | 2001-08-22 | 2001-08-23 | 5 | 0d |  | Project Sponsor | 8h |
| 7 | 1.1.5 | Select Project(s) | 1d? | 2001-08-23 | 2001-08-24 | 6 | 0d |  | Project Sponsor; Master Black Belt; Black Belt | 24h |
| 8 | 1.1.6 | Assign Project(s) to Black Belt | 1d? | 2001-08-24 | 2001-08-27 | 7 | 15.5d |  | Project Sponsor; Master Black Belt; Black Belt | 24h |
| 9 | 1.2 | **Team & Project Organization & Commitment** | 6d? | 2001-08-24 | 2001-09-03 |  | 0d |  |  | 192h |
| 10 | 1.2.1 | **Team Structure** | 6d? | 2001-08-24 | 2001-09-03 |  | 0d |  |  | 192h |
| 11 | 1.2.1.1 | Identify & Document Key Roles & Responsibilities | 1d? | 2001-08-24 | 2001-08-27 | 7 | 14.5d |  | Master Black Belt; Black Belt | 16h |
| 12 | 1.2.1.2 | Identify & Document Draft Project Team Charter | 1d? | 2001-08-24 | 2001-08-27 | 7 | 14.5d |  | Black Belt | 8h |
| 13 | 1.2.1.3 | Schedule Project Kick-Off Meeting | 1d? | 2001-08-24 | 2001-08-27 | 7 | 9.5d | 0d | Black Belt | 8h |
| 14 | 1.2.1.4 | **Conduct Kick-Off Meeting** | 5d? | 2001-08-27 | 2001-09-03 |  | 9.5d |  |  | 72h |
| 15 | 1.2.1.4.1 | Facilitate Kick-Off Meeting | 1d? | 2001-08-27 | 2001-08-28 | 13 | 9.5d | 0d | Black Belt | 8h |
| 16 | 1.2.1.4.2 | Establish & Document Team Communications Plan (Frequency, Location, Logistics) | 1d? | 2001-08-28 | 2001-08-29 | 15 | 12.5d |  | Black Belt | 8h |
| 17 | 1.2.1.4.3 | Establish & Document Team Reporting Plan (Frequency, Format) | 1d? | 2001-08-28 | 2001-08-29 | 15 | 12.5d |  | All Team Members | 8h |
| 18 | 1.2.1.4.4 | Identify & Document Project Glossary of Terms | 1d? | 2001-08-28 | 2001-08-29 | 15 | 12.5d |  | All Team Members | 8h |
| 19 | 1.2.1.4.5 | Review #1 - Project Team Charter | 1d? | 2001-08-28 | 2001-08-29 | 15 | 12.5d |  | All Team Members | 8h |
| 20 | 1.2.1.4.6 | Update #1 - Project Team Charter | 1d? | 2001-08-28 | 2001-08-29 | 15 | 9.5d | 0d | Black Belt | 8h |
| 21 | 1.2.1.4.7 | Distribute #1 - Project Team Charter | 1d? | 2001-08-29 | 2001-08-30 | 20 | 9.5d | 0d | Black Belt | 8h |
| 22 | 1.2.1.4.8 | Review #2 - Project Team Charter | 1d? | 2001-08-30 | 2001-08-31 | 21 | 9.5d | 0d | All Team Members | 8h |
| 23 | 1.2.1.4.9 | Approve Project Team Charter | 1d? | 2001-08-31 | 2001-09-03 | 22 | 9.5d |  | All Team Members | 8h |
| 24 | 1.2.1.5 | **Finance** | 6d? | 2001-08-24 | 2001-09-03 |  | 0d |  |  | 88h |
| 25 | 1.2.1.5.1 | Identify & Document Financial Measurements | 1d? | 2001-08-24 | 2001-08-27 | 7 | 0d |  | Corp. Finance; Black Belt | 16h |
| 26 | 1.2.1.5.2 | Distribute #1 - Financial Measurements | 1d? | 2001-08-27 | 2001-08-28 | 25 | 0d |  | Black Belt | 8h |
| 27 | 1.2.1.5.3 | Review #1 - Financial Measurements | 1d? | 2001-08-28 | 2001-08-29 | 26 | 0d |  | All Team Members | 8h |
| 28 | 1.2.1.5.4 | Update #1 - Financial Measurements | 1d? | 2001-08-29 | 2001-08-30 | 27 | 0d |  | Corp. Finance; Black Belt | 16h |
| 29 | 1.2.1.5.5 | Review #2 - Financial Measurements | 1d? | 2001-08-30 | 2001-08-31 | 28 | 0d |  | Black Belt | 8h |
| 30 | 1.2.1.5.6 | Approve Financial Measurements | 1d? | 2001-08-31 | 2001-09-03 | 29 | 9.5d |  | Project Sponsor; Black Belt; Corp. Finance; Business Unit Finance | 32h |
| 31 | 1.3 | Update Stakeholders Commitment Level(s) Chart | 1d? | 2001-09-03 | 2001-09-04 | 9 | 9.5d |  | Black Belt; Project Sponsor | 16h |
| 32 | 1.4 | Obtain "Go/No-Go" Decision From Project Sponsor | 0.5d? | 2001-08-31 | 2001-09-03 | 29 | 0d |  | Project Sponsor; Master Black Belt; Corp. Finance; Black Belt | 16h |

| ID | WBS | Task | Duration | Start | Finish | Predecessors | Total slack | Resources | Work |
| --- | --- | --- | --- | --- | --- | --- | --- | --- | --- |
| 34 | 2 | **Execute** | 21.17d? | 2001-08-20 | 2001-09-18 |  | 0d |  | 1472h |
| 35 | 2.1 | **DMAIC** | 21.17d? | 2001-08-20 | 2001-09-18 |  | 0d |  | 1472h |
| 36 | 2.1.1 | **Define** | 9d? | 2001-09-03 | 2001-09-14 | 32 | 0d |  | 192h |
| 37 | 2.1.1.1 | **Develop Project Charter** | 6.5d? | 2001-09-03 | 2001-09-11 |  | 0d |  | 160h |
| 38 | 2.1.1.1.1 | Schedule Business Unit Tour | 1d? | 2001-09-03 | 2001-09-04 |  | 10d |  |  |
| 39 | 2.1.1.1.2 | Schedule Project Charter Meeting | 1d? | 2001-09-03 | 2001-09-04 |  | 0d | Black Belt | 8h |
| 40 | 2.1.1.1.3 | Facilitate Project Charter Meeting | 1d? | 2001-09-04 | 2001-09-05 | 39 | 0d | Black Belt | 8h |
| 41 | 2.1.1.1.4 | Identify & Document Customer(s) | 1d? | 2001-09-05 | 2001-09-06 | 40 | 8d | All Team Members | 8h |
| 42 | 2.1.1.1.5 | Identify & Document Project Objectives and Goals | 1d? | 2001-09-05 | 2001-09-06 | 40 | 8d | All Team Members | 8h |
| 43 | 2.1.1.1.6 | Identify & Document Problem Statement | 1d? | 2001-09-05 | 2001-09-06 | 40 | 8d | All Team Members | 8h |
| 44 | 2.1.1.1.7 | Identify & Document Defect(s) | 1d? | 2001-09-03 | 2001-09-04 |  | 10d | All Team Members | 8h |
| 45 | 2.1.1.1.8 | Identify & Document Business Process Statement | 1d? | 2001-09-05 | 2001-09-06 | 40 | 8d | All Team Members | 8h |
| 46 | 2.1.1.1.9 | Identify & Document Voice of the Customer (VOC) | 1d? | 2001-09-05 | 2001-09-06 | 40 | 8d | All Team Members | 8h |
| 47 | 2.1.1.1.10 | Identify & Document High-Level Processes & Owners (SIPOC) | 1d? | 2001-09-05 | 2001-09-06 | 40 | 8d | All Team Members | 8h |
| 48 | 2.1.1.1.11 | Translate & Document VOC Into Key Quality Characteristics (KQC) | 1d? | 2001-09-05 | 2001-09-06 | 40 | 8d | All Team Members | 8h |
| 49 | 2.1.1.1.12 | Create Affinity Diagram | 1d? | 2001-09-05 | 2001-09-06 | 40 | 8d | All Team Members | 8h |
| 50 | 2.1.1.1.13 | Create KQC Diagram Tree | 1d? | 2001-09-05 | 2001-09-06 | 40 | 8d | All Team Members | 8h |
| 51 | 2.1.1.1.14 | Identify & Document Stakeholders | 1d? | 2001-09-05 | 2001-09-06 | 40 | 8d | All Team Members | 8h |
| 52 | 2.1.1.1.15 | Refine & Document Financial Measurements | 1d? | 2001-09-05 | 2001-09-06 | 40 | 8d | Corp. Finance; Black Belt | 16h |
| 53 | 2.1.1.1.16 | Create Project Charter | 1d? | 2001-09-05 | 2001-09-06 | 40 | 0d | Black Belt | 8h |
| 54 | 2.1.1.1.17 | Distribute Project Charter Document | 1d? | 2001-09-06 | 2001-09-07 | 53 | 0d | Black Belt | 8h |
| 55 | 2.1.1.1.18 | Review #1 - Project Charter Document | 0.5d? | 2001-09-07 | 2001-09-07 | 54 | 0d | All Team Members; Project Sponsor | 8h |
| 56 | 2.1.1.1.19 | Update #1 - Project Charter Document | 1d? | 2001-09-07 | 2001-09-10 | 55 | 0d | Black Belt | 8h |
| 57 | 2.1.1.1.20 | Distribute #1 - Revised Project Charter Document | 1d? | 2001-09-10 | 2001-09-11 | 56 | 0d | Black Belt | 8h |

| ID | WBS | Task | Duration | Start | Finish | Predecessors | Total slack | Resources | Work |
| --- | --- | --- | --- | --- | --- | --- | --- | --- | --- |
| 58 | 2.1.1.2 | **Approve Project Charter** | 2.5d? | 2001-09-11 | 2001-09-14 |  | 0d |  | 32h |
| 59 | 2.1.1.2.1 | Review #2 - Project Charter Document | 1d? | 2001-09-11 | 2001-09-12 | 57 | 0d | All Team Members; Project Sponsor | 16h |
| 60 | 2.1.1.2.2 | Update #2 - Project Charter Document | 1d? | 2001-09-12 | 2001-09-13 | 59 | 0d | Black Belt | 8h |
| 61 | 2.1.1.2.3 | Approve Project Charter Document | 0.5d? | 2001-09-13 | 2001-09-14 | 60 | 0d | Black Belt; Project Sponsor | 8h |
| 62 | 2.1.2 | Update Stakeholders Commitment Level(s) Chart | 1d? | 2001-08-20 | 2001-08-20 |  | 20.17d | Project Sponsor; Black Belt | 16h |
| 63 | 2.1.3 | Obtain "Go/No-Go" Decision From Project Sponsor | 1d? | 2001-09-14 | 2001-09-17 | 61 | 0d | Project Sponsor; Black Belt | 16h |
| 64 | 2.1.4 | **Measure** | 1d? | 2001-09-17 | 2001-09-18 | 63 | 0d |  | 504h |
| 65 | 2.1.4.1 | **Collect Baseline Defect Data (Sufficient, Relevant, Representative, Contextual)** | 1d? | 2001-09-17 | 2001-09-18 |  | 0d |  | 272h |
| 66 | 2.1.4.1.1 | **Identify & Document Data Collection Goals & Data Stratification** | 1d? | 2001-09-17 | 2001-09-18 |  | 0d |  | 40h |
| 67 | 2.1.4.1.1.1 | Identify & Document "Process Measures" (X's - Continuous/Discrete Data) | 0.5d? | 2001-09-17 | 2001-09-17 |  | 0.5d | Black Belt; Green Belt | 8h |
| 68 | 2.1.4.1.1.2 | Identify & Document "Results Measures" (Y's Continuous/Discrete Data) | 0.5d? | 2001-09-17 | 2001-09-17 |  | 0.5d | Black Belt; Green Belt | 8h |
| 69 | 2.1.4.1.1.3 | Identify & Document Data Stratification Types | 0.5d? | 2001-09-17 | 2001-09-17 |  | 0.5d | Black Belt; Green Belt | 8h |
| 70 | 2.1.4.1.1.4 | Document Data Collection Plan | 1d? | 2001-09-17 | 2001-09-18 |  | 0d | Black Belt; Green Belt | 16h |
| 71 | 2.1.4.1.2 | **Identify & Document Data Sampling Scheme** | 0.5d? | 2001-09-17 | 2001-09-17 |  | 0.5d |  | 48h |
| 72 | 2.1.4.1.2.1 | Identify & Document "What We Want To Learn" From Data Sampling | 0.5d? | 2001-09-17 | 2001-09-17 |  | 0.5d | Black Belt; Green Belt | 8h |
| 73 | 2.1.4.1.2.2 | Identify Data Collection Presentation Output (Plots, Control Charts, Histograms, Pareto etc.) | 0.5d? | 2001-09-17 | 2001-09-17 |  | 0.5d | Black Belt; Green Belt | 8h |
| 74 | 2.1.4.1.2.3 | Identify & Develop Data Collection Forms | 0.5d? | 2001-09-17 | 2001-09-17 |  | 0.5d | Black Belt; Green Belt | 8h |
| 75 | 2.1.4.1.2.4 | Identify & Develop Data Confirmation Checksheet(s) | 0.5d? | 2001-09-17 | 2001-09-17 |  | 0.5d | Black Belt; Green Belt | 8h |
| 76 | 2.1.4.1.2.5 | Verify Data Collection Sampling Against Measurement Characteristics Checklist | 0.5d? | 2001-09-17 | 2001-09-17 |  | 0.5d | Black Belt; Green Belt | 8h |
| 77 | 2.1.4.1.2.6 | Document Data Collection Plan | 0.5d? | 2001-09-17 | 2001-09-17 |  | 0.5d | Black Belt; Green Belt | 8h |
| 78 | 2.1.4.1.3 | **Identify & Document Operational Definitions & Procedures** | 1d? | 2001-09-17 | 2001-09-18 |  | 0d |  | 56h |
| 79 | 2.1.4.1.3.1 | Identify Operational Terms | 1d? | 2001-09-17 | 2001-09-18 |  | 0d | Black Belt; Green Belt | 16h |
| 80 | 2.1.4.1.3.2 | Define & Document Operational Terms | 1d? | 2001-09-17 | 2001-09-18 |  | 0d | Black Belt; Green Belt | 16h |
| 81 | 2.1.4.1.3.3 | Update Project Glossary of Terms | 0.5d? | 2001-09-17 | 2001-09-17 |  | 0.5d | Black Belt; Green Belt | 8h |
| 82 | 2.1.4.1.3.4 | Identify & Document Measurement System | 0.5d? | 2001-09-17 | 2001-09-17 |  | 0.5d | Black Belt; Green Belt | 8h |
| 83 | 2.1.4.1.3.5 | Document Data Collection Plan | 0.5d? | 2001-09-17 | 2001-09-17 |  | 0.5d | Black Belt; Green Belt | 8h |

| ID | WBS | Task | Duration | Start | Finish | Total slack | Resources | Work |
| --- | --- | --- | --- | --- | --- | --- | --- | --- |
| 84 | 2.1.4.1.4 | **Validate Measurement System** | 1d? | 2001-09-17 | 2001-09-18 | 0d |  | 32h |
| 85 | 2.1.4.1.4.1 | Conduct Gage R&R Study | 1d? | 2001-09-17 | 2001-09-18 | 0d | Black Belt | 8h |
| 86 | 2.1.4.1.4.2 | Validate Sample Data Against Measurement Characteristics Checklist | 1d? | 2001-09-17 | 2001-09-18 | 0d | Black Belt | 8h |
| 87 | 2.1.4.1.4.3 | Document Data Collection Plan | 1d? | 2001-09-17 | 2001-09-18 | 0d | Black Belt; Green Belt | 16h |
| 88 | 2.1.4.1.5 | **Collect Data** | 1d? | 2001-09-17 | 2001-09-18 | 0d |  | 64h |
| 89 | 2.1.4.1.5.1 | Identify Data Collectors | 1d? | 2001-09-17 | 2001-09-18 | 0d | Black Belt; Green Belt | 16h |
| 90 | 2.1.4.1.5.2 | Train Data Collectors | 1d? | 2001-09-17 | 2001-09-18 | 0d | Black Belt | 8h |
| 91 | 2.1.4.1.5.3 | Schedule Data Collection Day/Time/Duration | 1d? | 2001-09-17 | 2001-09-18 | 0d | Black Belt | 8h |
| 92 | 2.1.4.1.5.4 | Collect Process Measures (X's - Continuous/Discrete Data) | 1d? | 2001-09-17 | 2001-09-18 | 0d | Team Member #1 | 8h |
| 93 | 2.1.4.1.5.5 | Collect Results Measures (Y's Continuous/Discrete Data) | 1d? | 2001-09-17 | 2001-09-18 | 0d | Team Member #1 | 8h |
| 94 | 2.1.4.1.5.6 | Collect Data Across Stratification Types | 1d? | 2001-09-17 | 2001-09-18 | 0d | Team Member #1 | 8h |
| 95 | 2.1.4.1.5.7 | Document Data Collection Plan | 1d? | 2001-09-17 | 2001-09-18 | 0d | Black Belt | 8h |
| 96 | 2.1.4.1.6 | **Improve Measurement Consistency** | 1d? | 2001-09-17 | 2001-09-18 | 0d |  | 32h |
| 97 | 2.1.4.1.6.1 | Review & Refine Data Collection Plan | 1d? | 2001-09-17 | 2001-09-18 | 0d | Master Black Belt; Black Belt | 16h |
| 98 | 2.1.4.1.6.2 | Document Data Collection Plan | 1d? | 2001-09-17 | 2001-09-18 | 0d | Black Belt; Green Belt | 16h |
| 99 | 2.1.4.2 | **Plot & Analyze Defect Data** | 1d? | 2001-09-17 | 2001-09-18 | 0d |  | 72h |
| 100 | 2.1.4.2.1 | **Variation Plotting** | 1d? | 2001-09-17 | 2001-09-18 | 0d |  | 32h |
| 101 | 2.1.4.2.1.1 | Identify, Quantify & Document "Special" Cause Variations (Control Chart, Time Plot) | 1d? | 2001-09-17 | 2001-09-18 | 0d | Black Belt | 8h |
| 102 | 2.1.4.2.1.2 | Identify, Quantify & Document "Common" Cause Variations (Control Chart, Time Plot) | 1d? | 2001-09-17 | 2001-09-18 | 0d | Black Belt | 8h |
| 103 | 2.1.4.2.1.3 | Create Frequency Plots (Histogram, Dot-Plot, Stem-n-Leaf) | 1d? | 2001-09-17 | 2001-09-18 | 0d | Black Belt | 8h |
| 104 | 2.1.4.2.1.4 | Create Pareto Chart(s) | 1d? | 2001-09-17 | 2001-09-18 | 0d | Black Belt | 8h |
| 105 | 2.1.4.2.2 | **Variation Analysis** | 1d? | 2001-09-17 | 2001-09-18 | 0d |  | 24h |
| 106 | 2.1.4.2.2.1 | Identify "Common" Cause Variation Strategy (Stratification, Disaggregation, Experimentation) | 1d? | 2001-09-17 | 2001-09-18 | 0d | Black Belt | 8h |
| 107 | 2.1.4.2.2.2 | Analyze "Analysis" Causes Variations | 1d? | 2001-09-17 | 2001-09-18 | 0d | Black Belt | 8h |
| 108 | 2.1.4.2.2.3 | Analyze "Special" Causes Variations | 1d? | 2001-09-17 | 2001-09-18 | 0d | Black Belt | 8h |

| ID | WBS | Task | Duration | Start | Finish | Total slack | Resources | Work |
| --- | --- | --- | --- | --- | --- | --- | --- | --- |
| 109 | 2.1.4.2.3 | **Variation Response Formulation** | 1d? | 2001-09-17 | 2001-09-18 | 0d |  | 16h |
| 110 | 2.1.4.2.3.1 | Develop & Document "Special" Cause Variation Response(s) | 1d? | 2001-09-17 | 2001-09-18 | 0d | Black Belt | 8h |
| 111 | 2.1.4.2.3.2 | Develop & Document "Common" Cause Variation Response(s) | 1d? | 2001-09-17 | 2001-09-18 | 0d | Black Belt | 8h |
| 112 | 2.1.4.3 | **Calculate Process Sigma Level** | 1d? | 2001-09-17 | 2001-09-18 | 0d |  | 64h |
| 113 | 2.1.4.3.1 | Determine Single-Step vs. Multi-Step Process Sigma Level Calculation | 1d? | 2001-09-17 | 2001-09-18 | 0d | Black Belt | 8h |
| 114 | 2.1.4.3.2 | **Compute Process Sigma Level** | 1d? | 2001-09-17 | 2001-09-18 | 0d |  | 56h |
| 115 | 2.1.4.3.2.1 | **Compute Single-Step Process Sigma Level** | 1d? | 2001-09-17 | 2001-09-18 | 0d |  | 32h |
| 116 | 2.1.4.3.2.1.1 | Select A Process Sigma Calculation Method (Actual Yield vs. Normal Approximation) | 1d? | 2001-09-17 | 2001-09-18 | 0d | Black Belt | 8h |
| 117 | 2.1.4.3.2.1.2 | **Actual Yield** | 1d? | 2001-09-17 | 2001-09-18 | 0d |  | 16h |
| 118 | 2.1.4.3.2.1.2.1 | Compute First-Pass Yield Sigma Level | 1d? | 2001-09-17 | 2001-09-18 | 0d | Black Belt | 8h |
| 119 | 2.1.4.3.2.1.2.2 | Compute Final Yield Sigma Level | 1d? | 2001-09-17 | 2001-09-18 | 0d | Black Belt | 8h |
| 120 | 2.1.4.3.2.1.3 | **Normal Approximation** | 1d? | 2001-09-17 | 2001-09-18 | 0d |  | 8h |
| 121 | 2.1.4.3.2.1.3.1 | Compute Normal Approximation Sigma Level | 1d? | 2001-09-17 | 2001-09-18 | 0d | Black Belt | 8h |
| 122 | 2.1.4.3.2.2 | **Compute Multi-Step Process Sigma Level** | 1d? | 2001-09-17 | 2001-09-18 | 0d |  | 24h |
| 123 | 2.1.4.3.2.2.1 | Select A Process Sigma Calculation Method (Opportunity-Based vs. Throughput Probability) | 1d? | 2001-09-17 | 2001-09-18 | 0d | Black Belt | 8h |
| 124 | 2.1.4.3.2.2.2 | **Opportunity-Based** | 1d? | 2001-09-17 | 2001-09-18 | 0d |  | 8h |
| 125 | 2.1.4.3.2.2.2.1 | Compute Opportunity-Based Sigma Level | 1d? | 2001-09-17 | 2001-09-18 | 0d | Black Belt | 8h |
| 126 | 2.1.4.3.2.2.3 | **Throughput Probability** | 1d? | 2001-09-17 | 2001-09-18 | 0d |  | 8h |
| 127 | 2.1.4.3.2.2.3.1 | Compute Throughput Sigma Level | 1d? | 2001-09-17 | 2001-09-18 | 0d | Black Belt | 8h |
| 128 | 2.1.4.4 | **Create Process Flowchart Maps** | 1d? | 2001-09-17 | 2001-09-18 | 0d |  | 96h |
| 129 | 2.1.4.4.1 | Select Flowchart Type (Basic, Activity, Deployment, Opportunity) | 1d? | 2001-09-17 | 2001-09-18 | 0d | Green Belt | 8h |
| 130 | 2.1.4.4.2 | Document Process Flow "As-Is" | 1d? | 2001-09-17 | 2001-09-18 | 0d | Green Belt | 8h |
| 131 | 2.1.4.4.3 | **Identify Process Problems (Complexity & Waste)** | 1d? | 2001-09-17 | 2001-09-18 | 0d |  | 8h |
| 132 | 2.1.4.4.3.1 | Identify & Document Value-Added vs. Non-Value-Added Process/Steps | 1d? | 2001-09-17 | 2001-09-18 | 0d | Black Belt | 8h |

| ID | WBS | Task | Duration | Start | Finish | Predecessors | Total slack | Free slack | Resources | Work |
| --- | --- | --- | --- | --- | --- | --- | --- | --- | --- | --- |
| 133 | 2.1.4.4.4 | **Identify Process Problems (Time & Capacity)** | 1d? | 2001-09-17 | 2001-09-18 |  | 0d |  |  | 72h |
| 134 | 2.1.4.4.4.1 | Identify & Document Time Measurement(s) Definitions and Unit of Measurement(s) | 1d? | 2001-09-17 | 2001-09-18 |  | 0d |  | Black Belt | 8h |
| 135 | 2.1.4.4.4.2 | Identify & Document Time Measurement(s) Scope (Process-Leve, Sub-Process Level, Task-Level, Step-Level) | 1d? | 2001-09-17 | 2001-09-18 |  | 0d |  | Black Belt | 8h |
| 136 | 2.1.4.4.4.3 | Identify & Document Value-Added vs. Non-Value-Added Process/Steps | 1d? | 2001-09-17 | 2001-09-18 |  | 0d |  | Black Belt | 8h |
| 137 | 2.1.4.4.4.4 | Identify & Document Data Collection Form | 1d? | 2001-09-17 | 2001-09-18 |  | 0d |  | Black Belt | 8h |
| 138 | 2.1.4.4.4.5 | Compute Time Spent on Value-Added Tasks | 1d? | 2001-09-17 | 2001-09-18 |  | 0d |  | Black Belt | 8h |
| 139 | 2.1.4.4.4.6 | Compute Time Spent on Non-Value-Added Tasks | 1d? | 2001-09-17 | 2001-09-18 |  | 0d |  | Black Belt | 8h |
| 140 | 2.1.4.4.4.7 | Create Value Analysis Matrix | 1d? | 2001-09-17 | 2001-09-18 |  | 0d |  | Black Belt | 8h |
| 141 | 2.1.4.4.4.8 | Graph Cycle Time (Gantt Chart) | 1d? | 2001-09-17 | 2001-09-18 |  | 0d |  | Black Belt | 8h |
| 142 | 2.1.4.4.4.9 | Identify & Document Bottlenecks | 1d? | 2001-09-17 | 2001-09-18 |  | 0d |  | Black Belt | 8h |
| 143 | 2.1.5 | Refine & Document Financial Measurements | 1d? | 2001-08-20 | 2001-08-20 |  | 20.17d |  |  |  |
| 144 | 2.1.6 | Update Stakeholders Commitment Level(s) Chart | 1d? | 2001-08-20 | 2001-08-20 |  | 20.17d |  | Project Sponsor; Black Belt | 16h |
| 145 | 2.1.7 | Obtain "Go/No-Go" Decision From Project Sponsor | 1d? | 2001-08-20 | 2001-08-20 |  | 19.17d | 0d | Black Belt; Project Sponsor | 16h |
| 146 | 2.1.8 | **Analyze** | 1d? | 2001-08-21 | 2001-08-21 | 145 | 19.17d |  |  |  |
| 147 | 2.1.8.1 | **Develop a Focused Problem Statement** | 1d? | 2001-08-21 | 2001-08-21 |  | 19.17d |  |  |  |
| 148 | 2.1.8.1.1 | Refine Problem Statement | 1d? | 2001-08-21 | 2001-08-21 |  | 19.17d |  |  |  |
| 149 | 2.1.8.2 | **Identify Potential Problem Causes** | 1d? | 2001-08-21 | 2001-08-21 |  | 19.17d |  |  |  |
| 150 | 2.1.8.2.1 | Brainstorm & Document Potential Problem Causes | 1d? | 2001-08-21 | 2001-08-21 |  | 19.17d |  |  |  |
| 151 | 2.1.8.2.2 | Document "5 Whys" | 1d? | 2001-08-21 | 2001-08-21 |  | 19.17d |  |  |  |
| 152 | 2.1.8.3 | **Organize & Classify Potential Causes** | 1d? | 2001-08-21 | 2001-08-21 |  | 19.17d |  |  |  |
| 153 | 2.1.8.3.1 | Create Potential Problem Cause-and-Effect Diagram(s) | 1d? | 2001-08-21 | 2001-08-21 |  | 19.17d |  |  |  |
| 154 | 2.1.8.3.2 | Create Tree Diagram(s) | 1d? | 2001-08-21 | 2001-08-21 |  | 19.17d |  |  |  |
| 155 | 2.1.8.3.3 | Identify & Document "Might Cause" Check | 1d? | 2001-08-21 | 2001-08-21 |  | 19.17d |  |  |  |
| 156 | 2.1.8.4 | **Collect Data** | 1d? | 2001-08-21 | 2001-08-21 |  | 19.17d |  |  |  |
| 157 | 2.1.8.4.1 | Select Potential Problem Cause Verification Tool(s) (Scatter Plot, Stratified Frequency Plot, Table) | 1d? | 2001-08-21 | 2001-08-21 |  | 19.17d |  |  |  |
| 158 | 2.1.8.4.2 | Quantify Cause-Effect Relationships | 1d? | 2001-08-21 | 2001-08-21 |  | 19.17d |  |  |  |
| 159 | 2.1.8.4.3 | Analyze Cause-Effect Relationships | 1d? | 2001-08-21 | 2001-08-21 |  | 19.17d |  |  |  |
| 160 | 2.1.8.4.4 | Verify Existence of Cause-and-Effect Relationship(s) | 1d? | 2001-08-21 | 2001-08-21 |  | 19.17d |  |  |  |
| 161 | 2.1.8.4.5 | Test Cause-and-Effect Relationship Theory | 1d? | 2001-08-21 | 2001-08-21 |  | 19.17d |  |  |  |
| 162 | 2.1.8.4.6 | Determine Causation vs. Correlation | 1d? | 2001-08-21 | 2001-08-21 |  | 19.17d |  |  |  |
| 163 | 2.1.8.4.7 | Identify Root Causes & Patterns | 1d? | 2001-08-21 | 2001-08-21 |  | 19.17d |  |  |  |

| ID | WBS | Task | Duration | Start | Finish | Predecessors | Total slack | Free slack | Resources | Work |
| --- | --- | --- | --- | --- | --- | --- | --- | --- | --- | --- |
| 164 | 2.1.8.4.8 | **Identify Design of Experiments Strategy (One-At-A-Time, Factorial)** | 1d? | 2001-08-21 | 2001-08-21 |  | 19.17d |  |  |  |
| 165 | 2.1.8.4.8.1 | Identify Factors | 1d? | 2001-08-21 | 2001-08-21 |  | 19.17d |  |  |  |
| 166 | 2.1.8.4.8.2 | Identify & Document Operational Factors | 1d? | 2001-08-21 | 2001-08-21 |  | 19.17d |  |  |  |
| 167 | 2.1.8.4.8.3 | Select & Develop Experiments | 1d? | 2001-08-21 | 2001-08-21 |  | 19.17d |  |  |  |
| 168 | 2.1.8.4.8.4 | Collect Data | 1d? | 2001-08-21 | 2001-08-21 |  | 19.17d |  |  |  |
| 169 | 2.1.8.4.8.5 | Analyze & Interpret Data | 1d? | 2001-08-21 | 2001-08-21 |  | 19.17d |  |  |  |
| 170 | 2.1.9 | Finalize & Document Financial Measurements | 1d? | 2001-08-20 | 2001-08-20 |  | 20.17d |  |  |  |
| 171 | 2.1.10 | Update Stakeholders Commitment Level(s) Chart | 1d? | 2001-08-20 | 2001-08-20 |  | 20.17d |  | Project Sponsor; Black Belt | 16h |
| 172 | 2.1.11 | Obtain "Go/No-Go" Decision From Project Sponsor | 1d? | 2001-08-20 | 2001-08-20 |  | 15.5d | 0d | Black Belt; Project Sponsor | 16h |
| 173 | 2.1.12 | **Improve** | 4.67d? | 2001-08-21 | 2001-08-27 | 172 | 15.5d |  |  | 424h |
| 174 | 2.1.12.1 | **Brainstorm Potential Solutions** | 1d? | 2001-08-21 | 2001-08-21 |  | 19.17d |  |  | 32h |
| 175 | 2.1.12.1.1 | Create Involvement Matrix Worksheet | 1d? | 2001-08-21 | 2001-08-21 |  | 19.17d |  | Black Belt | 8h |
| 176 | 2.1.12.1.2 | Generate & Document Potential Solutions | 1d? | 2001-08-21 | 2001-08-21 |  | 19.17d |  | All Team Members | 8h |
| 177 | 2.1.12.1.3 | Document Pro's & Con's of Potential Solutions | 1d? | 2001-08-21 | 2001-08-21 |  | 19.17d |  | Black Belt; Green Belt | 16h |
| 178 | 2.1.12.2 | **Create a Prioritization Matrix** | 1d? | 2001-08-21 | 2001-08-21 |  | 19.17d |  |  | 8h |
| 179 | 2.1.12.2.1 | Set Up Prioritization Matrix Worksheet | 1d? | 2001-08-21 | 2001-08-21 |  | 19.17d |  | Black Belt | 8h |
| 180 | 2.1.12.3 | **Select a Solution** | 1d? | 2001-08-21 | 2001-08-21 |  | 19.17d |  |  | 24h |
| 181 | 2.1.12.3.1 | Score Potential Solution Alternatives | 1d? | 2001-08-21 | 2001-08-21 |  | 19.17d |  | All Team Members | 8h |
| 182 | 2.1.12.3.2 | Complete Prioritization Matrix Worksheet | 1d? | 2001-08-21 | 2001-08-21 |  | 19.17d |  | Black Belt | 8h |
| 183 | 2.1.12.3.3 | Refine Involvement Matrix Worksheet | 1d? | 2001-08-21 | 2001-08-21 |  | 19.17d |  | Black Belt | 8h |
| 184 | 2.1.12.4 | **Develop a Solution Pilot Plan** | 3.67d? | 2001-08-21 | 2001-08-24 |  | 15.5d |  |  | 144h |
| 185 | 2.1.12.4.1 | Identify Scope of Pilot Improvements | 0.5d? | 2001-08-21 | 2001-08-21 |  | 19.67d |  | All Team Members; Stakeholder | 8h |
| 186 | 2.1.12.4.2 | Identify Pilot Type | 1d? | 2001-08-21 | 2001-08-21 |  | 19.17d |  | Stakeholder; Black Belt | 16h |
| 187 | 2.1.12.4.3 | Identify Tasks | 1d? | 2001-08-21 | 2001-08-21 |  | 19.17d |  | Black Belt | 8h |
| 188 | 2.1.12.4.4 | Identify Resources | 1d? | 2001-08-21 | 2001-08-21 |  | 19.17d |  | Black Belt | 8h |
| 189 | 2.1.12.4.5 | Identify Budget | 1d? | 2001-08-21 | 2001-08-21 |  | 19.17d |  | Black Belt | 8h |
| 190 | 2.1.12.4.6 | Identify Timelines | 1d? | 2001-08-21 | 2001-08-21 |  | 19.17d |  | Black Belt | 8h |
| 191 | 2.1.12.4.7 | Identify Stakeholders | 1d? | 2001-08-21 | 2001-08-21 |  | 19.17d |  | Black Belt | 8h |
| 192 | 2.1.12.4.8 | Identify Pilot Stakeholders Commitment Level(s) | 1d? | 2001-08-21 | 2001-08-21 |  | 19.17d |  | Black Belt | 8h |
| 193 | 2.1.12.4.9 | Identify Potential Risks & Risk Management (FMEA Analysis Worksheet) | 1d? | 2001-08-21 | 2001-08-21 |  | 19.17d |  | Black Belt | 8h |
| 194 | 2.1.12.4.10 | Identify & Document Contingency & Backout Alternatives | 1d? | 2001-08-21 | 2001-08-21 |  | 19.17d |  | Black Belt | 8h |
| 195 | 2.1.12.4.11 | Create a Project Plan | 1d? | 2001-08-21 | 2001-08-21 |  | 19.17d |  | Black Belt | 8h |
| 196 | 2.1.12.4.12 | Distribute Project Plan | 1d? | 2001-08-21 | 2001-08-21 |  | 19.17d |  | Black Belt | 8h |
| 197 | 2.1.12.4.13 | Review #1 - Project Plan | 0.67d? | 2001-08-21 | 2001-08-21 |  | 15.5d | 0d | All Team Members; Stakeholder; Project Sponsor | 16h |
| 198 | 2.1.12.4.14 | Update #1 - Project Plan | 1d? | 2001-08-21 | 2001-08-22 | 197 | 15.5d | 0d | Black Belt | 8h |
| 199 | 2.1.12.4.15 | Distribute #1 - Revised Project Plan | 1d? | 2001-08-22 | 2001-08-23 | 198 | 15.5d | 0d | Black Belt | 8h |
| 200 | 2.1.12.4.16 | Obtain "Go/No-Go" Decision From Pilot Stakeholder(s) | 1d? | 2001-08-23 | 2001-08-24 | 199 | 15.5d | 0d | Stakeholder | 8h |

| ID | WBS | Task | Duration | Start | Finish | Predecessors | Total slack | Free slack | Resources | Work |
| --- | --- | --- | --- | --- | --- | --- | --- | --- | --- | --- |
| 201 | 2.1.12.5 | **Execute Pilot Plan** | 1d? | 2001-08-24 | 2001-08-27 | 200 | 15.5d |  | Black Belt; Stakeholder | 80h |
| 202 | 2.1.12.5.1 | Obtain Resources | 1d? | 2001-08-24 | 2001-08-27 |  | 15.5d |  | Black Belt; Stakeholder; Project Sponsor | 24h |
| 203 | 2.1.12.5.2 | Secure Facilities | 1d? | 2001-08-24 | 2001-08-27 |  | 15.5d |  | Black Belt; Stakeholder; Project Sponsor | 24h |
| 204 | 2.1.12.5.3 | Execute & Monitor Pilot (FMEA) | 1d? | 2001-08-24 | 2001-08-27 |  | 15.5d |  | Black Belt; Stakeholder | 16h |
| 205 | 2.1.12.6 | **Implement Pilot Plan** | 1d? | 2001-08-21 | 2001-08-21 |  | 19.17d |  | Stakeholder | 64h |
| 206 | 2.1.12.6.1 | Document New Process & Procedures | 1d? | 2001-08-21 | 2001-08-21 |  | 19.17d |  | All Team Members | 8h |
| 207 | 2.1.12.6.2 | Prepare Data Collection Forms | 1d? | 2001-08-21 | 2001-08-21 |  | 19.17d |  | Black Belt | 8h |
| 208 | 2.1.12.6.3 | Provide Training | 1d? | 2001-08-21 | 2001-08-21 |  | 19.17d |  | All Team Members | 8h |
| 209 | 2.1.12.6.4 | Conduct Limited-Scale Testing | 1d? | 2001-08-21 | 2001-08-21 |  | 19.17d |  | Stakeholder; Black Belt | 16h |
| 210 | 2.1.12.6.5 | Deploy Full-Scale | 1d? | 2001-08-21 | 2001-08-21 |  | 19.17d |  | Stakeholder; All Team Members | 16h |
| 211 | 2.1.12.7 | **Evaluate Pilot Benefits** | 1d? | 2001-08-21 | 2001-08-21 |  | 19.17d |  |  | 32h |
| 212 | 2.1.12.7.1 | Monitor Full-Scale Deployment | 1d? | 2001-08-21 | 2001-08-21 |  | 19.17d |  | Stakeholder; Black Belt | 16h |
| 213 | 2.1.12.7.2 | Collect Data | 1d? | 2001-08-21 | 2001-08-21 |  | 19.17d |  | Black Belt; Green Belt | 16h |
| 214 | 2.1.12.8 | **Quantify Pilot Results** | 1d? | 2001-08-21 | 2001-08-21 |  | 19.17d |  | Black Belt | 40h |
| 215 | 2.1.12.8.1 | Document "Before" vs. "After" Charts (Paretos, Frequency Plots, Histograms) | 1d? | 2001-08-21 | 2001-08-21 |  | 19.17d |  | Black Belt | 8h |
| 216 | 2.1.12.8.2 | Refine & Document Financial Measurements | 1d? | 2001-08-21 | 2001-08-21 |  | 19.17d |  | Corp. Finance; Black Belt | 16h |
| 217 | 2.1.12.8.3 | Re-calculate Process Sigma Level | 1d? | 2001-08-21 | 2001-08-21 |  | 19.17d |  | Black Belt | 8h |
| 218 | 2.1.12.8.4 | Evaluate Results & Methods | 1d? | 2001-08-21 | 2001-08-21 |  | 19.17d |  |  |  |
| 219 | 2.1.13 | Update Stakeholders Commitment Level(s) Chart | 1d? | 2001-08-20 | 2001-08-20 |  | 20.17d |  | Project Sponsor; Black Belt | 16h |
| 220 | 2.1.14 | Obtain "Go/No-Go" Decision From Project Sponsor | 1d? | 2001-08-20 | 2001-08-20 |  | 17.5d | 0d | Project Sponsor; Black Belt; Stakeholder | 24h |
| 221 | 2.1.15 | **Control** | 1d? | 2001-08-21 | 2001-08-21 | 220 | 17.5d | 0d |  | 216h |
| 222 | 2.1.15.1 | **Develop Standards and Practices** | 1d? | 2001-08-21 | 2001-08-21 |  | 17.5d |  |  | 48h |
| 223 | 2.1.15.1.1 | Identify & Document New Standards & Checkpoints (Flowcharts, Standard Practices Worksheet) | 1d? | 2001-08-21 | 2001-08-21 |  | 17.5d |  | All Team Members | 8h |
| 224 | 2.1.15.1.2 | Identify & Document Data Collection Forms | 1d? | 2001-08-21 | 2001-08-21 |  | 17.5d |  | Black Belt | 8h |
| 225 | 2.1.15.1.3 | Develop Training Materials | 1d? | 2001-08-21 | 2001-08-21 |  | 17.5d |  | Stakeholder; All Team Members | 16h |
| 226 | 2.1.15.1.4 | Train Process Owners | 1d? | 2001-08-21 | 2001-08-21 |  | 17.5d |  | Trainers; Black Belt | 16h |

| ID | WBS | Task | Duration | Start | Finish | Predecessors | Total slack | Free slack | Resources | Work |
| --- | --- | --- | --- | --- | --- | --- | --- | --- | --- | --- |
| 227 | 2.1.15.2 | **Monitor & Control Process (aka - "Maintain The Gain")** | 1d? | 2001-08-21 | 2001-08-21 |  | 17.5d |  |  | 168h |
| 228 | 2.1.15.2.1 | Select a Process Control Chart (Xbar, R Chart, p-Chart, np-Chart, c-Chart, -Chart) | 1d? | 2001-08-21 | 2001-08-21 |  | 17.5d |  | Black Belt | 8h |
| 229 | 2.1.15.2.2 | **Execute PDCA Cycle (Plan, Do, Act & Check)** | 1d? | 2001-08-21 | 2001-08-21 |  | 17.5d |  | Black Belt; Stakeholder | 24h |
| 230 | 2.1.15.2.2.1 | Create a QC Process Control Chart | 1d? | 2001-08-21 | 2001-08-21 |  | 17.5d |  |  |  |
| 231 | 2.1.15.2.2.2 | Conduct Self-Audits | 1d? | 2001-08-21 | 2001-08-21 |  | 17.5d |  | Stakeholder | 8h |
| 232 | 2.1.15.2.3 | Validate & Document Financial Measurements | 1d? | 2001-08-21 | 2001-08-21 |  | 17.5d |  | Corp. Finance; Black Belt; Stakeholder; Project Sponsor | 32h |
| 233 | 2.1.15.2.4 | Identify & Document Process For Updating Procedures | 1d? | 2001-08-21 | 2001-08-21 |  | 17.5d |  | All Team Members; Stakeholder | 16h |
| 234 | 2.1.15.2.5 | Link New Procedures to Strategic Business Objectives | 1d? | 2001-08-21 | 2001-08-21 |  | 17.5d |  | Black Belt; Stakeholder | 16h |
| 235 | 2.1.15.2.6 | Summarize and Communicate Learning's w/Stakeholders (Storyboard) | 1d? | 2001-08-21 | 2001-08-21 |  | 17.5d |  | Black Belt; Stakeholder | 16h |
| 236 | 2.1.15.2.7 | Develop Future Recommendations Plans | 0.5d? | 2001-08-21 | 2001-08-21 |  | 18d |  | Black Belt; Stakeholder | 8h |
| 237 | 2.1.15.2.8 | Identify & Assign On-Going Data Collector Resource | 1d? | 2001-08-21 | 2001-08-21 |  | 17.5d |  | Stakeholder | 8h |
| 238 | 2.1.15.2.9 | Identify & Assign On-Going Control Chart Monitor Resource | 1d? | 2001-08-21 | 2001-08-21 |  | 17.5d |  | Stakeholder | 8h |
| 239 | 2.1.15.2.10 | Collect On-Going Data | 1d? | 2001-08-21 | 2001-08-21 |  | 17.5d |  | Stakeholder; Black Belt | 16h |
| 240 | 2.1.15.2.11 | Monitor Variation ("Special" and "Common") | 1d? | 2001-08-21 | 2001-08-21 |  | 17.5d |  | Black Belt; Stakeholder | 16h |
| 242 | 3 | **Close** | 3.67d? | 2001-08-20 | 2001-08-23 |  | 17.5d |  |  | 48h |
| 243 | 3.1 | **Schedule An "Official Project Closed" Meeting** | 3.67d? | 2001-08-20 | 2001-08-23 |  | 17.5d |  |  | 48h |
| 244 | 3.1.1 | Recognize & Reward Team | 1d? | 2001-08-20 | 2001-08-20 |  | 20.17d |  | Project Sponsor; Stakeholder; All Team Members | 24h |
| 245 | 3.1.2 | Document Lessons Learned | 1d? | 2001-08-22 | 2001-08-22 | 221 | 17.5d | 0d | Black Belt | 8h |
| 246 | 3.1.3 | Finalize Costs of Six Sigma Project | 0.67d? | 2001-08-23 | 2001-08-23 | 245 | 17.5d |  | Black Belt; Corp. Finance; Project Sponsor | 16h |
